# Portierung von OpenCV auf RiotOS

Schedule from Planner, 2013-04-23 to 2013-06-13.
Freie Universität Berlin

## Calendars

- Vorgabe: Mon-Fri 08:00-12:00, 13:00-17:00; Sat-Sun off.

## Resources

| Resource |
| --- |
| Daniel Jakov Akrap |
| Lidia Krus |

## Schedule

| ID | WBS | Task | Type | Duration | Start | Finish | Predecessors | Complete | Constraint | Resources | Work |
| --- | --- | --- | --- | --- | --- | --- | --- | --- | --- | --- | --- |
| 1 | 1 | **Einarbeiten** |  |  | 2013-04-23 | 2013-05-08 |  |  |  |  | 312h |
| 2 | 1.1 | Einrichten der Arbeitsumgebung |  |  | 2013-04-23 | 2013-05-01 |  | 100% |  | Daniel Jakov Akrap; Lidia Krus | 104h |
| 3 | 1.2 | Einarbeiten in Riot OS |  |  | 2013-04-23 | 2013-05-01 |  | 100% | must start on 2013-04-23 | Daniel Jakov Akrap; Lidia Krus | 104h |
| 4 | 1.3 | Einarbeiten in CMAKE |  |  | 2013-04-30 | 2013-05-08 |  | 52% | must start on 2013-04-30 | Daniel Jakov Akrap; Lidia Krus | 104h |
| 5 | 2 | **CORE - Portierung** |  |  | 2013-05-08 | 2013-05-24 | 4 |  | must start on 2013-05-07 | Daniel Jakov Akrap; Lidia Krus | 192h |
| 6 | 2.1 | version.hpp |  |  | 2013-05-08 | 2013-05-16 |  |  |  | Lidia Krus | 48h |
| 7 | 2.2 | types.h |  |  | 2013-05-08 | 2013-05-16 |  |  |  | Daniel Jakov Akrap | 48h |
| 8 | 2.3 | core.hpp |  |  | 2013-05-16 | 2013-05-24 | 7 |  |  | Daniel Jakov Akrap | 48h |
| 9 | 2.4 | internal.hpp |  |  | 2013-05-08 | 2013-05-16 |  |  |  | Lidia Krus | 48h |
| 10 | 2.5 | CORE - Ende | milestone | 0d | 2013-05-24 | 2013-05-24 | 8 |  |  |  |  |
| 11 | 3 | **IMGPROC - Portierung** |  |  | 2013-05-24 | 2013-06-03 | 5 |  | must start on 2013-05-07 |  | 72h |
| 12 | 3.1 | types_c.h |  |  | 2013-05-24 | 2013-05-28 |  |  |  | Daniel Jakov Akrap | 16h |
| 13 | 3.2 | imgproc.hpp |  |  | 2013-05-28 | 2013-05-31 | 12 |  |  | Daniel Jakov Akrap | 24h |
| 14 | 3.3 | imgproc_c.h |  |  | 2013-05-28 | 2013-06-03 | 12 |  |  | Lidia Krus | 32h |
| 15 | 3.4 | IMGPROC - Ende | milestone | 0d | 2013-06-03 | 2013-06-03 | 14 |  |  |  |  |
| 16 | 4 | **VIDEO - Portierung** |  |  | 2013-06-03 | 2013-06-13 | 11 |  |  |  | 80h |
| 17 | 4.1 | background_segm.hpp |  |  | 2013-06-03 | 2013-06-05 |  |  |  | Daniel Jakov Akrap | 16h |
| 18 | 4.2 | trackin.hpp |  |  | 2013-06-03 | 2013-06-05 |  |  |  | Lidia Krus | 16h |
| 19 | 4.3 | precomp.hpp |  |  | 2013-06-05 | 2013-06-10 | 18, 17 |  |  | Daniel Jakov Akrap | 24h |
| 20 | 4.4 | bgf_gaussmix.cpp |  |  | 2013-06-10 | 2013-06-13 | 19 |  |  | Lidia Krus | 24h |
| 21 | 4.5 | Komplette Portierung zu Ende | milestone | 0d | 2013-06-13 | 2013-06-13 | 20 |  |  |  |  |
